# projektplan_ipa

How a schedule from MS Project changed from version to version. A marks actual dates.

## Version 1 (saved 2021-03-29)

Note of the change: added projektplan to vcs

| ID | WBS | Task | Duration | Start | Finish | Predecessors | Total float |
| --- | --- | --- | --- | --- | --- | --- | --- |
| 1 | 1 | **3D Web Anwendung des OSE Modells für die Produktion vorbereiten** | 10d | 2021-03-29 08:00 | 2021-04-14 17:00 |  | 0d |
| 2 | 1.1 | **Initiale Dokumentation** | 0.62d | 2021-03-29 08:00 | 2021-03-29 14:00 |  | 0d |
| 3 |  | Projektplan erstellen | 2h | 2021-03-29 08:00 | 2021-03-29 10:00 |  | 0d |
| 4 |  | Aufgabenstellung übernehmen | 1h | 2021-03-29 10:00 | 2021-03-29 11:00 | 3 | 0d |
| 5 |  | Projektmanagementmethode beschreiben | 2h | 2021-03-29 11:00 | 2021-03-29 14:00 | 4 | 0d |
| 6 |  | Initiale Dokumentation erstellt | 0d | 2021-03-29 14:00 | 2021-03-29 14:00 | 5 | 0d |
| 7 | 1.2 | **Analyse** | 1.88d | 2021-03-29 14:00 | 2021-03-31 12:00 |  | 0d |
| 8 |  | Systembeschreibung | 2h | 2021-03-29 14:00 | 2021-03-29 16:00 | 6 | 0d |
| 9 |  | Soll/Ist-Vergleich | 2h | 2021-03-29 16:00 | 2021-03-30 09:00 | 8 | 0d |
| 10 |  | Versionsverwaltungskonzept | 1h | 2021-03-30 09:00 | 2021-03-30 10:00 | 9 | 0d |
| 11 |  | Backupkonzept | 1h | 2021-03-30 10:00 | 2021-03-30 11:00 | 10 | 0d |
| 12 |  | Personas beschreiben | 1h | 2021-03-30 11:00 | 2021-03-30 12:00 | 11 | 0d |
| 13 |  | User Stories erstellen | 2h | 2021-03-30 13:00 | 2021-03-30 15:00 | 12 | 0d |
| 14 |  | OAuth2 Strategie erarbeiten | 4h | 2021-03-30 15:00 | 2021-03-31 10:00 | 13 | 0d |
| 15 |  | OAuth2 Strategie mit Marco Roth oder Markus Strittmatter besprechen | 1h | 2021-03-31 10:00 | 2021-03-31 11:00 | 14 | 0d |
| 16 |  | Feedback zu OAuth2konzept übernehmen | 1h | 2021-03-31 11:00 | 2021-03-31 12:00 | 15 | 0d |
| 17 |  | Analyse abgeschlossen | 0d | 2021-03-31 12:00 | 2021-03-31 12:00 | 16 | 0d |
| 18 | 1.3 | **Entwurf** | 1.25d | 2021-03-31 13:00 | 2021-04-01 15:00 |  | 0d |
| 19 |  | Softwareschnittstellen | 2h | 2021-03-31 13:00 | 2021-03-31 15:00 | 17 | 0d |
| 20 |  | Mockups erstellen | 2h | 2021-03-31 15:00 | 2021-03-31 17:00 | 19 | 0d |
| 21 |  | Mockups mit Auftraggeber besprechen | 1h | 2021-04-01 08:00 | 2021-04-01 09:00 | 20 | 0d |
| 22 |  | Feedback übernehmen | 1h | 2021-04-01 09:00 | 2021-04-01 10:00 | 21 | 0d |
| 23 |  | Testkonzept erarbeiten | 4h | 2021-04-01 10:00 | 2021-04-01 15:00 | 22 | 0d |
| 24 |  | Abschluss Entwurf | 0h | 2021-04-01 15:00 | 2021-04-01 15:00 | 23 | 0d |
| 25 | 1.4 | **Implementierung** | 4d | 2021-04-01 15:00 | 2021-04-09 15:00 |  | 0d |
| 26 |  | OAuth2 Strategie implementieren im backend | 4h | 2021-04-01 15:00 | 2021-04-06 10:00 | 24 | 0d |
| 27 |  | OAuth2 Strategie implementieren im Frontend | 4h | 2021-04-06 10:00 | 2021-04-06 15:00 | 26 | 0d |
| 28 |  | Model entität erstellen und für REST anbieten | 4h | 2021-04-06 15:00 | 2021-04-07 10:00 | 27 | 0d |
| 29 |  | Konfigurationsmenü erstellen | 4h | 2021-04-07 10:00 | 2021-04-07 15:00 | 28 | 0d |
| 30 |  | Automatisches verlinken | 4h | 2021-04-07 15:00 | 2021-04-08 10:00 | 29 | 0d |
| 31 |  | location entität erstellen und per rest anbieten | 4h | 2021-04-08 10:00 | 2021-04-08 15:00 | 30 | 0d |
| 32 |  | Standortwahl&wechsel implementieren | 4h | 2021-04-08 15:00 | 2021-04-09 10:00 | 31 | 0d |
| 33 |  | Dokumentation | 4h | 2021-04-09 10:00 | 2021-04-09 15:00 | 32 | 0d |
| 34 |  | Abschluss implementierung | 0d | 2021-04-09 15:00 | 2021-04-09 15:00 | 33 | 0d |
| 35 | 1.5 | **Testen** | 1d | 2021-04-09 15:00 | 2021-04-13 15:00 |  | 0d |
| 36 |  | Testcases abarbeiten | 4h | 2021-04-09 15:00 | 2021-04-13 10:00 | 34 | 0d |
| 37 |  | Dokumentation | 4h | 2021-04-13 10:00 | 2021-04-13 15:00 | 36 | 0d |
| 38 |  | Abschluss testen | 0d | 2021-04-13 15:00 | 2021-04-13 15:00 | 37 | 0d |
| 39 | 1.6 | **Abschluss** | 1.25d | 2021-04-13 15:00 | 2021-04-14 17:00 |  | 0d |
| 40 |  | Kurzfassung | 2h | 2021-04-13 15:00 | 2021-04-13 17:00 | 38 | 0d |
| 41 |  | Dokumentation überprüfen | 4h | 2021-04-14 08:00 | 2021-04-14 12:00 | 40 | 0d |
| 42 |  | Dokumentation anpassen | 4h | 2021-04-14 13:00 | 2021-04-14 17:00 | 41 | 0d |
| 43 |  | Abschluss IPA | 0d | 2021-04-14 17:00 | 2021-04-14 17:00 | 42 | 0d |

## Version 2 (saved 2021-03-29)

Note of the change: updated projektplan

Last finish 2021-04-14 → 2021-04-15 (+1d). Complete tasks 0 → 5.

Added:

| ID | Task | Duration | Start | Finish | Predecessors |
| --- | --- | --- | --- | --- | --- |
| 10 | Namenskonzept und Userstories erstellen | 1h | 2021-03-30 09:00 | 2021-03-30 10:00 | 9 |

Changed:

| ID | Task | Start | Finish | Duration | Complete | Total float | Predecessors |
| --- | --- | --- | --- | --- | --- | --- | --- |
| 1 | **3D Web Anwendung des OSE Modells für die Produktion vorbereiten** | 2021-03-29 08:00 A | 2021-04-14 17:00 → 2021-04-15 09:00 (+1d) | 10d → 10.12d | 0% → 10% |  |  |
| 2 | **Initiale Dokumentation** | 2021-03-29 08:00 A | 2021-03-29 14:00 A |  | 0% → 100% | 0d → none |  |
| 3 | Projektplan erstellen | 2021-03-29 08:00 A | 2021-03-29 10:00 A |  | 0% → 100% | 0d → none |  |
| 4 | Aufgabenstellung übernehmen | 2021-03-29 10:00 A | 2021-03-29 11:00 A |  | 0% → 100% | 0d → none |  |
| 5 | Projektmanagementmethode beschreiben | 2021-03-29 11:00 A | 2021-03-29 14:00 A |  | 0% → 100% | 0d → none |  |
| 6 | Initiale Dokumentation erstellt | 2021-03-29 14:00 A | 2021-03-29 14:00 A |  | 0% → 100% | 0d → none |  |
| 7 | **Analyse** | 2021-03-29 14:00 A | 2021-03-31 12:00 → 2021-03-31 14:00 | 1.88d → 2d | 0% → 19% |  |  |
| 8 | Systembeschreibung | 2021-03-29 14:00 A | 2021-03-29 16:00 A |  | 0% → 100% | 0d → none |  |
| 9 | Soll/Ist-Vergleich | 2021-03-29 16:00 A |  |  | 0% → 50% |  |  |
| 11 | Versionsverwaltungskonzept | 2021-03-30 09:00 → 2021-03-30 10:00 | 2021-03-30 10:00 → 2021-03-30 11:00 |  |  |  | 9 → 10 |
| 12 | Backupkonzept | 2021-03-30 10:00 → 2021-03-30 11:00 | 2021-03-30 11:00 → 2021-03-30 12:00 |  |  |  |  |
| 13 | Personas beschreiben | 2021-03-30 11:00 → 2021-03-30 13:00 | 2021-03-30 12:00 → 2021-03-30 14:00 |  |  |  |  |
| 14 | User Stories erstellen | 2021-03-30 13:00 → 2021-03-30 14:00 | 2021-03-30 15:00 → 2021-03-30 16:00 |  |  |  |  |
| 15 | OAuth2 Strategie erarbeiten | 2021-03-30 15:00 → 2021-03-30 16:00 | 2021-03-31 10:00 → 2021-03-31 11:00 |  |  |  |  |
| 16 | OAuth2 Strategie mit Marco Roth oder Markus Strittmatter besprechen | 2021-03-31 10:00 → 2021-03-31 11:00 | 2021-03-31 11:00 → 2021-03-31 12:00 |  |  |  |  |
| 17 | Feedback zu OAuth2konzept übernehmen | 2021-03-31 11:00 → 2021-03-31 13:00 | 2021-03-31 12:00 → 2021-03-31 14:00 |  |  |  |  |
| 18 | Analyse abgeschlossen | 2021-03-31 12:00 → 2021-03-31 14:00 | 2021-03-31 12:00 → 2021-03-31 14:00 |  |  |  |  |
| 19 | **Entwurf** | 2021-03-31 13:00 → 2021-03-31 14:00 | 2021-04-01 15:00 → 2021-04-01 16:00 |  |  |  |  |
| 20 | Softwareschnittstellen | 2021-03-31 13:00 → 2021-03-31 14:00 | 2021-03-31 15:00 → 2021-03-31 16:00 |  |  |  |  |
| 21 | Mockups erstellen | 2021-03-31 15:00 → 2021-03-31 16:00 | 2021-03-31 17:00 → 2021-04-01 09:00 (+1d) |  |  |  |  |
| 22 | Mockups mit Auftraggeber besprechen | 2021-04-01 08:00 → 2021-04-01 09:00 | 2021-04-01 09:00 → 2021-04-01 10:00 |  |  |  |  |
| 23 | Feedback übernehmen | 2021-04-01 09:00 → 2021-04-01 10:00 | 2021-04-01 10:00 → 2021-04-01 11:00 |  |  |  |  |
| 24 | Testkonzept erarbeiten | 2021-04-01 10:00 → 2021-04-01 11:00 | 2021-04-01 15:00 → 2021-04-01 16:00 |  |  |  |  |
| 25 | Abschluss Entwurf | 2021-04-01 15:00 → 2021-04-01 16:00 | 2021-04-01 15:00 → 2021-04-01 16:00 |  |  |  |  |
| 26 | **Implementierung** | 2021-04-01 15:00 → 2021-04-01 16:00 | 2021-04-09 15:00 → 2021-04-09 16:00 |  |  |  |  |
| 27 | OAuth2 Strategie implementieren im backend | 2021-04-01 15:00 → 2021-04-01 16:00 | 2021-04-06 10:00 → 2021-04-06 11:00 |  |  |  |  |
| 28 | OAuth2 Strategie implementieren im Frontend | 2021-04-06 10:00 → 2021-04-06 11:00 | 2021-04-06 15:00 → 2021-04-06 16:00 |  |  |  |  |
| 29 | Model entität erstellen und für REST anbieten | 2021-04-06 15:00 → 2021-04-06 16:00 | 2021-04-07 10:00 → 2021-04-07 11:00 |  |  |  |  |
| 30 | Konfigurationsmenü erstellen | 2021-04-07 10:00 → 2021-04-07 11:00 | 2021-04-07 15:00 → 2021-04-07 16:00 |  |  |  |  |
| 31 | Automatisches verlinken | 2021-04-07 15:00 → 2021-04-07 16:00 | 2021-04-08 10:00 → 2021-04-08 11:00 |  |  |  |  |
| 32 | location entität erstellen und per rest anbieten | 2021-04-08 10:00 → 2021-04-08 11:00 | 2021-04-08 15:00 → 2021-04-08 16:00 |  |  |  |  |
| 33 | Standortwahl&wechsel implementieren | 2021-04-08 15:00 → 2021-04-08 16:00 | 2021-04-09 10:00 → 2021-04-09 11:00 |  |  |  |  |
| 34 | Dokumentation | 2021-04-09 10:00 → 2021-04-09 11:00 | 2021-04-09 15:00 → 2021-04-09 16:00 |  |  |  |  |
| 35 | Abschluss implementierung | 2021-04-09 15:00 → 2021-04-09 16:00 | 2021-04-09 15:00 → 2021-04-09 16:00 |  |  |  |  |
| 36 | **Testen** | 2021-04-09 15:00 → 2021-04-09 16:00 | 2021-04-13 15:00 → 2021-04-13 16:00 |  |  |  |  |
| 37 | Testcases abarbeiten | 2021-04-09 15:00 → 2021-04-09 16:00 | 2021-04-13 10:00 → 2021-04-13 11:00 |  |  |  |  |
| 38 | Dokumentation | 2021-04-13 10:00 → 2021-04-13 11:00 | 2021-04-13 15:00 → 2021-04-13 16:00 |  |  |  |  |
| 39 | Abschluss testen | 2021-04-13 15:00 → 2021-04-13 16:00 | 2021-04-13 15:00 → 2021-04-13 16:00 |  |  |  |  |
| 40 | **Abschluss** | 2021-04-13 15:00 → 2021-04-13 16:00 | 2021-04-14 17:00 → 2021-04-15 09:00 (+1d) |  |  |  |  |
| 41 | Kurzfassung | 2021-04-13 15:00 → 2021-04-13 16:00 | 2021-04-13 17:00 → 2021-04-14 09:00 (+1d) |  |  |  |  |
| 42 | Dokumentation überprüfen | 2021-04-14 08:00 → 2021-04-14 09:00 | 2021-04-14 12:00 → 2021-04-14 14:00 |  |  |  |  |
| 43 | Dokumentation anpassen | 2021-04-14 13:00 → 2021-04-14 14:00 | 2021-04-14 17:00 → 2021-04-15 09:00 (+1d) |  |  |  |  |
| 44 | Abschluss IPA | 2021-04-14 17:00 → 2021-04-15 09:00 (+1d) | 2021-04-14 17:00 → 2021-04-15 09:00 (+1d) |  |  |  |  |

## Version 3 (saved 2021-03-30)

Note of the change: update aj&pp

Last finish 2021-04-15 → 2021-04-14 (-1d). Complete tasks 5 → 11.

Changed:

| ID | Task | Start | Finish | Duration | Complete | Total float | Other |
| --- | --- | --- | --- | --- | --- | --- | --- |
| 1 | **3D Web Anwendung des OSE Modells für die Produktion vorbereiten** |  | 2021-04-15 09:00 → 2021-04-14 17:00 (-1d) | 10.12d → 10d | 10% → 18% |  |  |
| 7 | **Analyse** |  | 2021-03-31 14:00 → 2021-03-31 12:00 | 2d → 1.88d | 19% → 60% |  |  |
| 9 | Soll/Ist-Vergleich |  | 2021-03-30 09:00 → 2021-03-30 08:30 A | 2h → 1.5h | 50% → 100% | 0d → none |  |
| 10 | Namenskonzept | 2021-03-30 09:00 → 2021-03-30 08:30 A | 2021-03-30 10:00 → 2021-03-30 09:00 A | 1h → 0.5h | 0% → 100% | 0d → none | was named Namenskonzept und Userstories erstellen |
| 11 | Versionsverwaltungskonzept | 2021-03-30 10:00 → 2021-03-30 09:00 A | 2021-03-30 11:00 → 2021-03-30 10:00 A |  | 0% → 100% | 0d → none |  |
| 12 | Backupkonzept | 2021-03-30 11:00 → 2021-03-30 10:00 A | 2021-03-30 12:00 → 2021-03-30 11:00 A |  | 0% → 100% | 0d → none |  |
| 13 | Personas beschreiben | 2021-03-30 13:00 → 2021-03-30 11:00 A | 2021-03-30 14:00 → 2021-03-30 12:00 A |  | 0% → 100% | 0d → none |  |
| 14 | User Stories erstellen | 2021-03-30 14:00 → 2021-03-30 13:00 A | 2021-03-30 16:00 → 2021-03-30 15:00 A |  | 0% → 100% | 0d → none |  |
| 15 | OAuth2 Strategie erarbeiten | 2021-03-30 16:00 → 2021-03-30 15:00 | 2021-03-31 11:00 → 2021-03-31 10:00 |  |  |  |  |
| 16 | OAuth2 Strategie mit Marco Roth oder Markus Strittmatter besprechen | 2021-03-31 11:00 → 2021-03-31 10:00 | 2021-03-31 12:00 → 2021-03-31 11:00 |  |  |  |  |
| 17 | Feedback zu OAuth2konzept übernehmen | 2021-03-31 13:00 → 2021-03-31 11:00 | 2021-03-31 14:00 → 2021-03-31 12:00 |  |  |  |  |
| 18 | Analyse abgeschlossen | 2021-03-31 14:00 → 2021-03-31 12:00 | 2021-03-31 14:00 → 2021-03-31 12:00 |  |  |  |  |
| 19 | **Entwurf** | 2021-03-31 14:00 → 2021-03-31 13:00 | 2021-04-01 16:00 → 2021-04-01 15:00 |  |  |  |  |
| 20 | Softwareschnittstellen | 2021-03-31 14:00 → 2021-03-31 13:00 | 2021-03-31 16:00 → 2021-03-31 15:00 |  |  |  |  |
| 21 | Mockups erstellen | 2021-03-31 16:00 → 2021-03-31 15:00 | 2021-04-01 09:00 → 2021-03-31 17:00 (-1d) |  |  |  |  |
| 22 | Mockups mit Auftraggeber besprechen | 2021-04-01 09:00 → 2021-04-01 08:00 | 2021-04-01 10:00 → 2021-04-01 09:00 |  |  |  |  |
| 23 | Feedback übernehmen | 2021-04-01 10:00 → 2021-04-01 09:00 | 2021-04-01 11:00 → 2021-04-01 10:00 |  |  |  |  |
| 24 | Testkonzept erarbeiten | 2021-04-01 11:00 → 2021-04-01 10:00 | 2021-04-01 16:00 → 2021-04-01 15:00 |  |  |  |  |
| 25 | Abschluss Entwurf | 2021-04-01 16:00 → 2021-04-01 15:00 | 2021-04-01 16:00 → 2021-04-01 15:00 |  |  |  |  |
| 26 | **Implementierung** | 2021-04-01 16:00 → 2021-04-01 15:00 | 2021-04-09 16:00 → 2021-04-09 15:00 |  |  |  |  |
| 27 | OAuth2 Strategie implementieren im backend | 2021-04-01 16:00 → 2021-04-01 15:00 | 2021-04-06 11:00 → 2021-04-06 10:00 |  |  |  |  |
| 28 | OAuth2 Strategie implementieren im Frontend | 2021-04-06 11:00 → 2021-04-06 10:00 | 2021-04-06 16:00 → 2021-04-06 15:00 |  |  |  |  |
| 29 | Model entität erstellen und für REST anbieten | 2021-04-06 16:00 → 2021-04-06 15:00 | 2021-04-07 11:00 → 2021-04-07 10:00 |  |  |  |  |
| 30 | Konfigurationsmenü erstellen | 2021-04-07 11:00 → 2021-04-07 10:00 | 2021-04-07 16:00 → 2021-04-07 15:00 |  |  |  |  |
| 31 | Automatisches verlinken | 2021-04-07 16:00 → 2021-04-07 15:00 | 2021-04-08 11:00 → 2021-04-08 10:00 |  |  |  |  |
| 32 | location entität erstellen und per rest anbieten | 2021-04-08 11:00 → 2021-04-08 10:00 | 2021-04-08 16:00 → 2021-04-08 15:00 |  |  |  |  |
| 33 | Standortwahl&wechsel implementieren | 2021-04-08 16:00 → 2021-04-08 15:00 | 2021-04-09 11:00 → 2021-04-09 10:00 |  |  |  |  |
| 34 | Dokumentation | 2021-04-09 11:00 → 2021-04-09 10:00 | 2021-04-09 16:00 → 2021-04-09 15:00 |  |  |  |  |
| 35 | Abschluss implementierung | 2021-04-09 16:00 → 2021-04-09 15:00 | 2021-04-09 16:00 → 2021-04-09 15:00 |  |  |  |  |
| 36 | **Testen** | 2021-04-09 16:00 → 2021-04-09 15:00 | 2021-04-13 16:00 → 2021-04-13 15:00 |  |  |  |  |
| 37 | Testcases abarbeiten | 2021-04-09 16:00 → 2021-04-09 15:00 | 2021-04-13 11:00 → 2021-04-13 10:00 |  |  |  |  |
| 38 | Dokumentation | 2021-04-13 11:00 → 2021-04-13 10:00 | 2021-04-13 16:00 → 2021-04-13 15:00 |  |  |  |  |
| 39 | Abschluss testen | 2021-04-13 16:00 → 2021-04-13 15:00 | 2021-04-13 16:00 → 2021-04-13 15:00 |  |  |  |  |
| 40 | **Abschluss** | 2021-04-13 16:00 → 2021-04-13 15:00 | 2021-04-15 09:00 → 2021-04-14 17:00 (-1d) |  |  |  |  |
| 41 | Kurzfassung | 2021-04-13 16:00 → 2021-04-13 15:00 | 2021-04-14 09:00 → 2021-04-13 17:00 (-1d) |  |  |  |  |
| 42 | Dokumentation überprüfen | 2021-04-14 09:00 → 2021-04-14 08:00 | 2021-04-14 14:00 → 2021-04-14 12:00 |  |  |  |  |
| 43 | Dokumentation anpassen | 2021-04-14 14:00 → 2021-04-14 13:00 | 2021-04-15 09:00 → 2021-04-14 17:00 (-1d) |  |  |  |  |
| 44 | Abschluss IPA | 2021-04-15 09:00 → 2021-04-14 17:00 (-1d) | 2021-04-15 09:00 → 2021-04-14 17:00 (-1d) |  |  |  |  |

## Version 4 (saved 2021-03-31)

Note of the change: Update Projektplan & arbeitsjournal für heute

Last finish stays 2021-04-14. Complete tasks 11 → 15.

Changed:

| ID | Task | Start | Finish | Duration | Complete | Total float | Other |
| --- | --- | --- | --- | --- | --- | --- | --- |
| 1 | **3D Web Anwendung des OSE Modells für die Produktion vorbereiten** |  |  |  | 18% → 30% |  |  |
| 7 | **Analyse** |  | 2021-03-31 12:00 A |  | 60% → 100% | 0d → none |  |
| 15 | OAuth2 Strategie erarbeiten | 2021-03-30 15:00 A | 2021-03-31 10:00 → 2021-03-31 11:00 A | 4h → 5h | 0% → 100% | 0d → none |  |
| 16 | OAuth2 Strategie mit Marco Roth oder Markus Strittmatter besprechen | 2021-03-31 10:00 → 2021-03-31 11:00 A | 2021-03-31 11:00 → 2021-03-31 12:00 A |  | 0% → 100% | 0d → none |  |
| 17 | Feedback zu OAuth2konzept übernehmen | 2021-03-31 11:00 → 2021-03-31 12:00 A | 2021-03-31 12:00 A | 1h → 0h | 0% → 100% | 0d → none |  |
| 18 | Analyse abgeschlossen | 2021-03-31 12:00 A | 2021-03-31 12:00 A |  | 0% → 100% | 0d → none |  |
| 19 | **Entwurf** | 2021-03-31 13:00 A | 2021-04-01 15:00 → 2021-04-01 17:00 | 1.25d → 1.5d | 0% → 33% |  |  |
| 20 | Systementwurf / Softwareschnittstellen | 2021-03-31 13:00 A | 2021-03-31 15:00 → 2021-03-31 17:00 | 2h → 4h | 0% → 75% | 0d → 0.12d | was named Softwareschnittstellen |
| 21 | Mockups erstellen | 2021-03-31 15:00 → 2021-04-01 08:00 A (+1d) | 2021-03-31 17:00 → 2021-04-01 10:00 (+1d) |  | 0% → 50% |  |  |
| 22 | Mockups mit Auftraggeber besprechen | 2021-04-01 08:00 → 2021-04-01 10:00 | 2021-04-01 09:00 → 2021-04-01 11:00 |  |  |  |  |
| 23 | Feedback übernehmen | 2021-04-01 09:00 → 2021-04-01 11:00 | 2021-04-01 10:00 → 2021-04-01 12:00 |  |  |  |  |
| 24 | Testkonzept erarbeiten | 2021-04-01 10:00 → 2021-04-01 13:00 | 2021-04-01 15:00 → 2021-04-01 17:00 |  |  |  |  |
| 25 | Abschluss Entwurf | 2021-04-01 15:00 → 2021-04-01 17:00 | 2021-04-01 15:00 → 2021-04-01 17:00 |  |  |  |  |
| 26 | **Implementierung** | 2021-04-01 15:00 → 2021-04-06 08:00 (+5d) |  | 4d → 3.75d |  |  |  |
| 27 | OAuth2 Strategie implementieren im backend | 2021-04-01 15:00 → 2021-04-06 08:00 (+5d) | 2021-04-06 10:00 → 2021-04-06 11:00 | 4h → 3h |  |  |  |
| 28 | OAuth2 Strategie implementieren im Frontend | 2021-04-06 10:00 → 2021-04-06 11:00 |  | 4h → 3h |  |  |  |

## Version 5 (saved 2021-04-06)

Note of the change: projektplan back to a4

Last finish stays 2021-04-14. Complete tasks 15 → 21.

Added:

| ID | Task | Duration | Start | Finish | Predecessors |
| --- | --- | --- | --- | --- | --- |
| 27 | User entität erstellen und per REST verfügbar machen | 1h | 2021-04-06 09:00 | 2021-04-06 10:00 | 25 |
| 29 | Startseite erstellen | 1h | 2021-04-06 13:00 | 2021-04-06 14:00 | 28 |

Changed:

| ID | Task | Start | Finish | Duration | Complete | Total float | Predecessors |
| --- | --- | --- | --- | --- | --- | --- | --- |
| 1 | **3D Web Anwendung des OSE Modells für die Produktion vorbereiten** |  |  |  | 30% → 41% |  |  |
| 19 | **Entwurf** |  | 2021-04-01 17:00 → 2021-04-06 09:00 A (+5d) | 1.5d → 1.62d | 33% → 100% | 0d → none |  |
| 20 | Systementwurf / Softwareschnittstellen |  | 2021-03-31 17:00 A |  | 75% → 100% | 0.12d → none |  |
| 21 | Mockups erstellen |  | 2021-04-01 10:00 → 2021-04-01 11:00 A | 2h → 3h | 50% → 100% | 0d → none |  |
| 22 | Mockups mit Auftraggeber besprechen | 2021-04-01 10:00 → 2021-04-01 11:00 A | 2021-04-01 11:00 → 2021-04-01 12:00 A |  | 0% → 100% | 0d → none |  |
| 23 | Feedback übernehmen | 2021-04-01 11:00 → 2021-04-01 13:00 A | 2021-04-01 12:00 → 2021-04-01 14:00 A |  | 0% → 100% | 0d → none |  |
| 24 | Testkonzept erarbeiten | 2021-04-01 13:00 → 2021-04-01 14:00 A | 2021-04-01 17:00 → 2021-04-06 09:00 A (+5d) |  | 0% → 100% | 0d → none |  |
| 25 | Abschluss Entwurf | 2021-04-01 17:00 → 2021-04-06 09:00 A (+5d) | 2021-04-01 17:00 → 2021-04-06 09:00 A (+5d) |  | 0% → 100% | 0d → none |  |
| 26 | **Implementierung** | 2021-04-06 08:00 → 2021-04-06 09:00 | 2021-04-09 15:00 → 2021-04-09 16:00 |  |  |  |  |
| 28 | OAuth2 Strategie implementieren im backend | 2021-04-06 08:00 → 2021-04-06 10:00 | 2021-04-06 11:00 → 2021-04-06 12:00 | 3h → 2h |  |  | 25 → 27 |
| 30 | OAuth2 Strategie implementieren im Frontend | 2021-04-06 11:00 → 2021-04-06 14:00 | 2021-04-06 15:00 → 2021-04-06 16:00 | 3h → 2h |  |  | 28 → 29, 28 |
| 31 | Model entität erstellen und für REST anbieten | 2021-04-06 15:00 → 2021-04-06 16:00 | 2021-04-07 10:00 → 2021-04-07 11:00 |  |  |  |  |
| 32 | Konfigurationsmenü erstellen | 2021-04-07 10:00 → 2021-04-07 11:00 | 2021-04-07 15:00 → 2021-04-07 16:00 |  |  |  |  |
| 33 | Automatisches verlinken | 2021-04-07 15:00 → 2021-04-07 16:00 | 2021-04-08 10:00 → 2021-04-08 11:00 |  |  |  |  |
| 34 | location entität erstellen und per rest anbieten | 2021-04-08 10:00 → 2021-04-08 11:00 | 2021-04-08 15:00 → 2021-04-08 16:00 |  |  |  |  |
| 35 | Standortwahl&wechsel implementieren | 2021-04-08 15:00 → 2021-04-08 16:00 | 2021-04-09 10:00 → 2021-04-09 11:00 |  |  |  |  |
| 36 | Dokumentation | 2021-04-09 10:00 → 2021-04-09 11:00 | 2021-04-09 15:00 → 2021-04-09 16:00 |  |  |  |  |
| 37 | Abschluss implementierung | 2021-04-09 15:00 → 2021-04-09 16:00 | 2021-04-09 15:00 → 2021-04-09 16:00 |  |  |  |  |
| 38 | **Testen** | 2021-04-09 15:00 → 2021-04-09 16:00 | 2021-04-13 15:00 → 2021-04-13 16:00 |  |  |  |  |
| 39 | Testcases abarbeiten | 2021-04-09 15:00 → 2021-04-09 16:00 | 2021-04-13 10:00 → 2021-04-13 11:00 |  |  |  |  |
| 40 | Dokumentation | 2021-04-13 10:00 → 2021-04-13 11:00 | 2021-04-13 15:00 → 2021-04-13 16:00 |  |  |  |  |
| 41 | Abschluss testen | 2021-04-13 15:00 → 2021-04-13 16:00 | 2021-04-13 15:00 → 2021-04-13 16:00 |  |  |  |  |
| 42 | **Abschluss** | 2021-04-13 15:00 → 2021-04-13 16:00 |  | 1.25d → 1.12d |  |  |  |
| 43 | Kurzfassung | 2021-04-13 15:00 → 2021-04-13 16:00 | 2021-04-13 17:00 → 2021-04-14 09:00 (+1d) |  |  |  |  |
| 44 | Dokumentation überprüfen | 2021-04-14 08:00 → 2021-04-14 09:00 |  | 4h → 3h |  |  |  |

## Version 6 (saved 2021-04-07)

Note of the change: Projektplan&Arbeitsjournal für 07.04.2021

Last finish stays 2021-04-14. Complete tasks 21 → 26.

Changed:

| ID | Task | Start | Finish | Duration | Complete | Total float | Predecessors | Other |
| --- | --- | --- | --- | --- | --- | --- | --- | --- |
| 1 | **3D Web Anwendung des OSE Modells für die Produktion vorbereiten** |  |  |  | 41% → 60% |  |  |  |
| 26 | **Implementierung** | 2021-04-06 09:00 A | 2021-04-09 16:00 → 2021-04-13 09:00 (+4d) | 3.75d → 4d | 0% → 47% |  |  |  |
| 27 | Startseite erstellen | 2021-04-06 13:00 → 2021-04-06 09:00 A | 2021-04-06 14:00 → 2021-04-06 10:00 A |  | 0% → 100% | 0d → none | 29 → 25 |  |
| 28 | User entität erstellen | 2021-04-06 09:00 → 2021-04-06 10:00 A | 2021-04-06 10:00 → 2021-04-06 11:00 A |  | 0% → 100% | 0d → none | 25 → 27 | was named User entität erstellen und per REST verfügbar machen |
| 29 | OAuth2 Strategie implementieren im backend | 2021-04-06 10:00 → 2021-04-06 11:00 A | 2021-04-06 12:00 → 2021-04-06 16:00 A | 2h → 4h | 0% → 100% | 0d → none |  |  |
| 30 | OAuth2 Strategie implementieren im Frontend | 2021-04-06 14:00 → 2021-04-06 16:00 A | 2021-04-06 16:00 → 2021-04-07 09:00 A (+1d) |  | 0% → 100% | 0d → none | 27, 29 → 29 |  |
| 31 | Model entität erstellen und für REST anbieten | 2021-04-06 16:00 → 2021-04-07 09:00 A (+1d) | 2021-04-07 11:00 → 2021-04-07 14:00 A |  | 0% → 100% | 0d → none |  |  |
| 32 | location entität erstellen und per rest anbieten | 2021-04-08 11:00 → 2021-04-07 14:00 A (-1d) | 2021-04-08 16:00 → 2021-04-08 09:00 |  | 0% → 75% |  | 33 → 31, 33 |  |
| 33 | Automatisches verlinken | 2021-04-07 16:00 → 2021-04-08 09:00 (+1d) | 2021-04-08 11:00 → 2021-04-08 14:00 |  |  |  | 34 → 32, 34 |  |
| 34 | Konfigurationsmenü erstellen | 2021-04-07 11:00 → 2021-04-08 14:00 (+1d) | 2021-04-07 16:00 → 2021-04-09 09:00 (+2d) |  |  |  | 31 → 33, 31 |  |
| 35 | Standortwahl&wechsel implementieren | 2021-04-08 16:00 → 2021-04-09 09:00 (+1d) | 2021-04-09 11:00 → 2021-04-09 14:00 |  |  |  | 32 → 34, 32 |  |
| 36 | Dokumentation | 2021-04-09 11:00 → 2021-04-09 14:00 | 2021-04-09 16:00 → 2021-04-13 09:00 (+4d) |  |  |  |  |  |
| 37 | Abschluss implementierung | 2021-04-09 16:00 → 2021-04-13 09:00 (+4d) | 2021-04-09 16:00 → 2021-04-13 09:00 (+4d) |  |  |  |  |  |
| 38 | **Testen** | 2021-04-09 16:00 → 2021-04-13 09:00 (+4d) | 2021-04-13 16:00 → 2021-04-13 17:00 | 1d → 0.88d |  |  |  |  |
| 39 | Testcases abarbeiten | 2021-04-09 16:00 → 2021-04-13 09:00 (+4d) | 2021-04-13 11:00 → 2021-04-13 12:00 | 4h → 3h |  |  |  |  |
| 40 | Dokumentation | 2021-04-13 11:00 → 2021-04-13 13:00 | 2021-04-13 16:00 → 2021-04-13 17:00 |  |  |  |  |  |
| 41 | Abschluss testen | 2021-04-13 16:00 → 2021-04-13 17:00 | 2021-04-13 16:00 → 2021-04-13 17:00 |  |  |  |  |  |
| 42 | **Abschluss** | 2021-04-13 16:00 → 2021-04-14 08:00 (+1d) |  | 1.12d → 1d |  |  |  |  |
| 43 | Kurzfassung | 2021-04-13 16:00 → 2021-04-14 08:00 (+1d) |  | 2h → 1h |  |  |  |  |

## Version 7 (saved 2021-04-09)

Note of the change: PP und AJ vom 08.04.2021

Last finish stays 2021-04-14. Complete tasks 26 → 28.

Changed:

| ID | Task | Start | Finish | Complete | Total float |
| --- | --- | --- | --- | --- | --- |
| 1 | **3D Web Anwendung des OSE Modells für die Produktion vorbereiten** |  |  | 60% → 70% |  |
| 26 | **Implementierung** |  |  | 47% → 72% |  |
| 32 | location entität erstellen und per rest anbieten |  | 2021-04-08 09:00 A | 75% → 100% | 0d → none |
| 33 | Automatisches verlinken | 2021-04-08 09:00 A | 2021-04-08 14:00 A | 0% → 100% | 0d → none |
| 34 | Konfigurationsmenü erstellen | 2021-04-08 14:00 A |  | 0% → 75% |  |

## Version 8 (saved 2021-04-13)

Note of the change: Projektplan update

Last finish stays 2021-04-14. Complete tasks 28 → 39.

Changed:

| ID | Task | Start | Finish | Complete | Total float |
| --- | --- | --- | --- | --- | --- |
| 1 | **3D Web Anwendung des OSE Modells für die Produktion vorbereiten** |  | 2021-04-14 17:00 A | 70% → 100% | 0d → none |
| 26 | **Implementierung** |  | 2021-04-13 09:00 A | 72% → 100% | 0d → none |
| 34 | Konfigurationsmenü erstellen |  | 2021-04-09 09:00 A | 75% → 100% | 0d → none |
| 35 | Standortwahl&wechsel implementieren | 2021-04-09 09:00 A | 2021-04-09 14:00 A | 0% → 100% | 0d → none |
| 36 | Dokumentation | 2021-04-09 14:00 A | 2021-04-13 09:00 A | 0% → 100% | 0d → none |
| 37 | Abschluss implementierung | 2021-04-13 09:00 A | 2021-04-13 09:00 A | 0% → 100% | 0d → none |
| 38 | **Testen** | 2021-04-13 09:00 A | 2021-04-13 17:00 A | 0% → 100% | 0d → none |
| 39 | Testcases abarbeiten | 2021-04-13 09:00 A | 2021-04-13 12:00 A | 0% → 100% | 0d → none |
| 40 | Dokumentation | 2021-04-13 13:00 A | 2021-04-13 17:00 A | 0% → 100% | 0d → none |
| 41 | Abschluss testen | 2021-04-13 17:00 A | 2021-04-13 17:00 A | 0% → 100% | 0d → none |
| 42 | **Abschluss** | 2021-04-14 08:00 A | 2021-04-14 17:00 A | 0% → 100% | 0d → none |
| 43 | Kurzfassung | 2021-04-14 08:00 A | 2021-04-14 09:00 A | 0% → 100% | 0d → none |
| 44 | Dokumentation überprüfen | 2021-04-14 09:00 A | 2021-04-14 12:00 A | 0% → 100% | 0d → none |
| 45 | Dokumentation anpassen | 2021-04-14 13:00 A | 2021-04-14 17:00 A | 0% → 100% | 0d → none |
| 46 | Abschluss IPA | 2021-04-14 17:00 A | 2021-04-14 17:00 A | 0% → 100% | 0d → none |
